Schedule from GanttProject, 2017-02-13 to 2017-04-14.

## Calendars

- Project calendar: Mon-Sun working.

## Resources

| Resource |
| --- |
| mirfan |
| ashahid |
| ansarif |
| jsyed |
| muusman |
| bwasim |
| msalman |
| mkaleem |

## Schedule

| ID | WBS | Task | Duration | Start | Finish | Complete | Resources | Jira |
| --- | --- | --- | --- | --- | --- | --- | --- | --- |
| 1 | 1 | **Project** | 61d | 2017-02-13 | 2017-04-14 | 78% |  |  |
| 2 | 1.1 | **POC-Phase-1** | 61d | 2017-02-13 | 2017-04-14 | 82% |  | BSP-8406 |
| 3 | 1.1.1 | **Unified BSP** | 46d | 2017-02-28 | 2017-04-14 | 74% |  | BSP-8345 |
| 4 | 1.1.1.1 | **New BSP Structure and Integration** | 38d | 2017-02-28 | 2017-04-06 | 94% |  | BSP-8357 |
| 5 | 1.1.1.1.1 | Unified BSP Interface proposal | 11d | 2017-02-28 | 2017-03-10 | 100% | mirfan | BSP-8264 |
| 6 | 1.1.1.1.2 | Unifying BSP Initialization flow for NRS and SC BSPs | 4d | 2017-03-31 | 2017-04-03 | 50% | ashahid | BSP-8353 |
| 7 | 1.1.1.1.3 | Integration of SC BSP with DM | 2d | 2017-03-27 | 2017-03-28 | 100% | ashahid | BSP-8354 |
| 8 | 1.1.1.1.4 | Integration of Unified drivers and updated BSPs | 9d | 2017-03-29 | 2017-04-06 | 100% | ashahid | BSP-8355 |
| 9 | 1.1.1.2 | **Unified Serial Driver** | 20d | 2017-03-01 | 2017-03-20 | 99% |  | BSP-8221 |
| 10 | 1.1.1.2.1 | **Design** | 10d | 2017-03-01 | 2017-03-10 | 100% |  | BSP-8227 |
| 11 | 1.1.1.2.1.1 | Unified BSP Interface proposal | 10d | 2017-03-01 | 2017-03-10 | 100% | ashahid | BSP-8225 |
| 12 | 1.1.1.2.2 | Serial Driver implementation | 7d | 2017-03-14 | 2017-03-20 | 98% | ashahid | BSP-8229 |
| 13 | 1.1.1.3 | **Unified Ethernet Driver** | 31d | 2017-03-15 | 2017-04-14 | 60% |  | BSP-8306 |
| 14 | 1.1.1.3.1 | Discuss and finalize the Nucleus Buffers proposal | 6d | 2017-03-22 | 2017-03-27 | 100% | ansarif | BSP-8326 |
| 15 | 1.1.1.3.2 | Implement Buffers support and interface LWNET with new Ethernet driver | 3d | 2017-04-05 | 2017-04-07 | 10% | jsyed | BSP-8327 |
| 16 | 1.1.1.3.3 | Update LWNET to use the new buffers | 19d | 2017-03-27 | 2017-04-14 | 45% | muusman | BSP-8325 |
| 17 | 1.1.1.3.4 | Define a new BSP and OS driver interface for the Ethernet driver (BSP team and MW team) | 6d | 2017-03-15 | 2017-03-20 | 100% | ansarif | BSP-8324 |
| 18 | 1.1.1.3.5 | Unified Ethernet driver Implementation for Sabrelite | 12d | 2017-03-20 | 2017-03-31 | 105% | bwasim | BSP-8230 |
| 19 | 1.1.1.3.6 | Unified Ethernet driver Implementation for QEMU (realview_eb_ct926ejs) | 9d | 2017-04-04 | 2017-04-12 | 75% | ansarif | BSP-8401 |
| 20 | 1.1.2 | **Device Manager Remodal** | 57d | 2017-02-13 | 2017-04-10 | 100% |  | BSP-8299 |
| 21 | 1.1.2.1 | **Design** | 16d | 2017-02-13 | 2017-02-28 | 100% |  | BSP-8227 |
| 22 | 1.1.2.1.1 | Device Manager Code Review | 16d | 2017-02-13 | 2017-02-28 | 100% | mirfan | BSP-8223 |
| 23 | 1.1.2.1.2 | Prepare a proposal to remodal Device Manager | 16d | 2017-02-13 | 2017-02-28 | 100% | ashahid | BSP-8222 |
| 24 | 1.1.2.2 | **Device Manager implementation** | 29d | 2017-03-13 | 2017-04-10 | 100% |  | BSP-8228 |
| 25 | 1.1.2.2.1 | **Device Labels update** | 2d | 2017-03-13 | 2017-03-14 | 100% | mirfan | OS-7561 |
| 26 | 1.1.2.2.1.1 | Implement new labeling scheme for Device Manager | 2d | 2017-03-13 | 2017-03-14 | 100% | msalman | OS-7541 |
| 27 | 1.1.2.2.1.2 | Update the Device Manager metadata files to generate labels. | 1d | 2017-03-14 | 2017-03-14 | 100% | msalman | OS-7542 |

| ID | WBS | Task | Duration | Start | Finish | Complete | Resources | Jira |
| --- | --- | --- | --- | --- | --- | --- | --- | --- |
| 28 | 1.1.2.2.2 | **Updates to Device Registry** | 5d | 2017-03-13 | 2017-03-17 | 100% | mirfan | OS-7543 |
| 29 | 1.1.2.2.2.1 | Removal of device sessions form Device Manager. | 1d | 2017-03-13 | 2017-03-13 | 100% | mkaleem | OS-7544 |
| 30 | 1.1.2.2.2.2 | Update device Open/Close mechanism to handle removal of device sessions form Device Manager | 2d | 2017-03-16 | 2017-03-17 | 100% | mkaleem | OS-7545 |
| 31 | 1.1.2.2.3 | **Device Functionality Lists** | 14d | 2017-03-14 | 2017-03-27 | 100% | mirfan | OS-7546 |
| 32 | 1.1.2.2.3.1 | Add support of Functionality lists to Device Manager | -15d | 2017-04-12 | 2017-04-12 | -100% | mkaleem | OS-7547 |
| 33 | 1.1.2.2.3.2 | Update device registration flow via DVC_Dev_Register. | 1d | 2017-03-15 | 2017-03-15 | 100% | mkaleem | OS-7548 |
| 34 | 1.1.2.2.3.3 | Update device unregistration flow via DVC_Dev_Unregister. | 1d | 2017-03-14 | 2017-03-14 | 100% | mkaleem | OS-7549 |
| 35 | 1.1.2.2.4 | **Device Manager New APIs** | 1d | 2017-03-15 | 2017-03-15 | 100% | mirfan | OS-7550 |
| 36 | 1.1.2.2.4.1 | Implement DVC_Dev_Request API | 1d | 2017-03-15 | 2017-03-15 | 100% | msalman | OS-7551 |
| 37 | 1.1.2.2.4.2 | Implement DVC_Dev_Get_Instance API. | 1d | 2017-03-15 | 2017-03-15 | 100% | msalman | OS-7552 |
| 38 | 1.1.2.2.5 | **Device Manager Deprecated APIs** | 1d | 2017-03-16 | 2017-03-16 | 100% | mirfan | OS-7553 |
| 39 | 1.1.2.2.5.1 | Remove Device Manager's deprecated APIs (DVC_Dev_Read/Write and DVC_Dev_IOCTL) | 1d | 2017-03-16 | 2017-03-16 | 100% | msalman | OS-7554 |
| 40 | 1.1.2.2.6 | **Device Discovery Mechanism** | 3d | 2017-03-29 | 2017-03-31 | 100% | mirfan | OS-7556 |
| 41 | 1.1.2.2.6.1 | Remove known_id_list and its references from device discovery | -11d | 2017-04-12 | 2017-04-12 | -100% | mkaleem | OS-7557 |
| 42 | 1.1.2.2.6.2 | Implement APIs and code updated for cases where new device is added to the system | 1d | 2017-03-29 | 2017-03-29 | 100% | mkaleem | OS-7558 |
| 43 | 1.1.2.2.6.3 | Implement APIs and code updated for cases where new listener is added to the system | 1d | 2017-03-31 | 2017-03-31 | 100% | mkaleem | OS-7559 |
| 44 | 1.1.2.2.6.4 | Update internals of DVC_Reg_Change_Search in accordance with the new design proposal. | 1d | 2017-03-31 | 2017-03-31 | 100% | mkaleem | OS-7560 |
| 45 | 1.1.2.2.7 | **Prototype Power management services** | 20d | 2017-03-22 | 2017-04-10 | 100% |  | OS-7636 |
| 46 | 1.1.2.2.7.1 | Prototype Power management services with new Device Manager. | 1d | 2017-03-22 | 2017-03-22 | 100% | msalman | OS-7555 |
| 47 | 1.1.2.2.7.2 | Integrate functionality list to power services | 2d | 2017-03-30 | 2017-03-31 | 100% | msalman | OS-7635 |
| 48 | 1.1.2.2.7.3 | modify DVC_Dev_ID_Open to return device handle if device is already opened in case of power labels | 1d | 2017-04-10 | 2017-04-10 | 100% | msalman | OS-7669 |
| 49 | 1.1.2.2.7.4 | Modify DVC_Dev_Open to return functionality list after opening device | 1d | 2017-04-10 | 2017-04-10 | 100% | msalman | OS-7668 |
| 50 | 1.1.2.2.8 | Incorporate Design Review Feedback | -15d | 2017-04-12 | 2017-04-12 | -100% | mirfan | BSP-8226 |
| 51 | 1.2 | **Backlog** | 4d | 2017-04-10 | 2017-04-13 | 14% |  | BSP-8405 |
| 52 | 1.2.1 | Investigate if DV_DEV_ID can be replaced by DV_DEV_HANDLE | 1d | 2017-04-12 | 2017-04-12 |  |  | BSP-8403 |
| 53 | 1.2.2 | Investigate if we can remove lable_list and label_cnt from open functions for devices. | 1d | 2017-04-13 | 2017-04-13 |  |  | BSP-8404 |
| 54 | 1.2.3 | Cleanup for SC and NRS BSPs/OS changes | 1d | 2017-04-10 | 2017-04-10 | 20% | ashahid | BSP-8410 |
